# OCSICO - Strativia Basic project WP

Schedule from MS Project, 2013-07-10 to 2013-10-30.

## Calendars

- Standard: Mon-Fri 08:00-12:00, 13:00-17:00; Sat-Sun off.

## Resources

| Resource |
| --- |
| Project Manager |
| Designer |
| HTML Coder |
| PHP Developer 1 |
| PHP Developer 2 |
| QA Engineer |
| WEB Developer |
| iOS developer |
| Android developer |
| Customer |

## Schedule

| ID | WBS | Task | Type | Duration | Start | Finish | Predecessors | Total slack | Free slack | Constraint | Resources | Work |
| --- | --- | --- | --- | --- | --- | --- | --- | --- | --- | --- | --- | --- |
| 1 | 1 | **SafeStart App & Web-server Project** |  | 81d | 2013-07-10 | 2013-10-30 |  | 0d |  |  |  | 1196h |
| 2 | 1.1 | **Milestones** |  | 47.88d | 2013-08-26 | 2013-10-30 |  | 0d |  |  |  |  |
| 3 | 1.1.1 | Mobile app UI designed and approved; Accounts and Users management functionality done | milestone | 0d | 2013-08-26 | 2013-08-26 |  | 47.88d |  | start no earlier than 2013-08-26 |  |  |
| 4 | 1.1.2 | Beta version release | milestone | 0d | 2013-09-25 | 2013-09-25 | 76 | 25d |  |  |  |  |
| 5 | 1.1.3 | Final release | milestone | 0d | 2013-10-30 | 2013-10-30 | 84 | 0d |  |  |  |  |
| 6 | 1.2 | **Analysis and planning** |  | 4d | 2013-07-10 | 2013-07-15 |  | 22.5d |  |  |  | 40h |
| 7 | 1.2.1 | Requirements analysis and discussions |  | 2d | 2013-07-10 | 2013-07-11 |  | 22.5d | 0d |  | Project Manager [50%] | 8h |
| 8 | 1.2.2 | Project plan and its updates | milestone | 0d | 2013-07-11 | 2013-07-11 | 7 | 22.5d | 0d |  | Project Manager [50%] |  |
| 9 | 1.2.3 | Test plan & cases |  | 4d | 2013-07-10 | 2013-07-15 |  | 77d |  |  | QA Engineer | 32h |
| 10 | 1.3 | **Design and HTML coding** |  | 14.5d | 2013-07-12 | 2013-08-01 | 8 | 22.5d | 0d |  |  | 96h |
| 11 | 1.3.1 | Graphical design |  | 7.5d | 2013-07-12 | 2013-07-23 |  | 22.5d | 0d |  | Designer | 40h |
| 12 | 1.3.2 | GUI Drawing |  | 2d | 2013-07-23 | 2013-07-25 | 11 | 22.5d | 0d |  | Designer | 16h |
| 13 | 1.3.3 | Approval with customer | milestone | 0d | 2013-07-25 | 2013-07-25 | 12 | 22.5d | 0d |  | Customer; Designer |  |
| 14 | 1.3.4 | Html coding (create theme for Sencha Touch) |  | 5d | 2013-07-25 | 2013-08-01 | 13 | 22.5d |  |  | HTML Coder | 40h |
| 15 | 1.4 | **Development** |  | 31.5d | 2013-08-01 | 2013-09-13 | 10 | 0d |  |  |  | 920h |
| 16 | 1.4.1 | **Backend (Server REST API)** |  | 20.25d | 2013-08-01 | 2013-08-29 |  | 11.25d |  |  |  | 216h |
| 17 | 1.4.1.1 | Database structure |  | 1.5d | 2013-08-01 | 2013-08-02 |  | 30d |  |  | PHP Developer 2; PHP Developer 1 | 24h |
| 18 | 1.4.1.2 | System architecture (based on Zend Framework 2 module skeleton) |  | 1d | 2013-08-05 | 2013-08-05 |  | 29d |  |  | PHP Developer 1; PHP Developer 2 | 16h |
| 19 | 1.4.1.3 | ACL (based on existing module for Zend Framework 2) |  | 0.75d | 2013-08-06 | 2013-08-06 |  | 28.25d |  |  | PHP Developer 1; PHP Developer 2 | 12h |
| 20 | 1.4.1.4 | Auth |  | 0.5d | 2013-08-06 | 2013-08-07 |  | 27.75d |  |  | PHP Developer 1; PHP Developer 2 | 8h |
| 21 | 1.4.1.5 | API Methods (based on existing module for Zend Framework 2) |  | 1.5d | 2013-08-07 | 2013-08-08 |  | 26.25d |  |  | PHP Developer 1; PHP Developer 2 | 24h |
| 22 | 1.4.1.6 | PDF reports/documents generation (simple temlate with company logo) |  | 0.75d | 2013-08-08 | 2013-08-09 |  | 25.5d |  |  | PHP Developer 1; PHP Developer 2 | 12h |
| 23 | 1.4.1.7 | Push notifications Mobile devices |  | 8.75d | 2013-08-09 | 2013-08-22 |  | 16.75d |  |  | PHP Developer 1; PHP Developer 2 | 32h |
| 24 | 1.4.1.8 | Email notifications (based on existing module for Zend Framework 2) |  | 0.75d | 2013-08-22 | 2013-08-22 |  | 16d |  |  | PHP Developer 1; PHP Developer 2 | 12h |
| 25 | 1.4.1.9 | Background jobs and multiple queues (based on existing module for Zend Framework 2) |  | 1.5d | 2013-08-23 | 2013-08-26 |  | 14.5d |  |  | PHP Developer 1; PHP Developer 2 | 24h |
| 26 | 1.4.1.10 | Caching |  | 1.5d | 2013-08-26 | 2013-08-27 |  | 13d |  |  | PHP Developer 1; PHP Developer 2 | 24h |
| 27 | 1.4.1.11 | Cron tasks (we will create only script for call API method via console) |  | 0.25d | 2013-08-28 | 2013-08-28 |  | 12.75d |  |  | PHP Developer 1; PHP Developer 2 | 4h |
| 28 | 1.4.1.12 | Unit tests (cover only the basic functionality) |  | 1.5d | 2013-08-28 | 2013-08-29 |  | 11.25d |  |  | PHP Developer 1; PHP Developer 2 | 24h |

| ID | WBS | Task | Type | Duration | Start | Finish | Predecessors | Total slack | Free slack | Resources | Work |
| --- | --- | --- | --- | --- | --- | --- | --- | --- | --- | --- | --- |
| 29 | 1.4.2 | **Web Frontend** |  | 31.5d | 2013-08-01 | 2013-09-13 | 8 | 0d |  |  | 252h |
| 30 | 1.4.2.1 | Client side architecture and layout (based on Sencha Touch application) |  | 2d | 2013-08-01 | 2013-08-05 |  | 29.5d |  | WEB Developer | 16h |
| 31 | 1.4.2.2 | Sign in\Sign up page (based on Sencha Touch components) |  | 2d | 2013-08-05 | 2013-08-07 |  | 27.5d |  | WEB Developer | 16h |
| 32 | 1.4.2.3 | Panel access according to ACL |  | 1.5d | 2013-08-07 | 2013-08-08 |  | 26d |  | WEB Developer | 12h |
| 33 | 1.4.2.4 | System settings panel (based on Sencha Touch components) |  | 1d | 2013-08-09 | 2013-08-09 |  | 25d |  | WEB Developer | 8h |
| 34 | 1.4.2.5 | Accounts management (based on Sencha Touch components) |  | 2d | 2013-08-12 | 2013-08-13 |  | 23d |  | WEB Developer | 16h |
| 35 | 1.4.2.6 | e-Commerce integration (simple module if needed) | milestone | 0d | 2013-08-01 | 2013-08-01 |  | 31.5d |  | WEB Developer |  |
| 36 | 1.4.2.7 | Account settings |  | 1d | 2013-08-14 | 2013-08-14 |  | 22d |  | WEB Developer | 8h |
| 37 | 1.4.2.8 | User moderation and subscription (based on Sencha Touch components) |  | 2d | 2013-08-15 | 2013-08-16 |  | 20d |  | WEB Developer | 16h |
| 38 | 1.4.2.9 | User settings (profile) (based on Sencha Touch components) |  | 1d | 2013-08-19 | 2013-08-19 |  | 19d |  | WEB Developer | 8h |
| 39 | 1.4.2.10 | Custom field for vehicle (based on Sencha Touch components) |  | 3d | 2013-08-20 | 2013-08-22 |  | 16d |  | WEB Developer | 24h |
| 40 | 1.4.2.11 | Vehicles management (based on Sencha Touch components) |  | 3d | 2013-08-23 | 2013-08-27 |  | 13d |  | WEB Developer | 24h |
| 41 | 1.4.2.12 | Alerts notification |  | 2d | 2013-08-28 | 2013-08-29 |  | 11d |  | WEB Developer | 16h |
| 42 | 1.4.2.13 | Vehicle inspection checklist |  | 5d | 2013-08-30 | 2013-09-05 |  | 6d |  | WEB Developer | 40h |
| 43 | 1.4.2.14 | Vehicle report panel |  | 3d | 2013-09-06 | 2013-09-10 |  | 3d |  | WEB Developer | 24h |
| 44 | 1.4.2.15 | Backend information collection panel |  | 3d | 2013-09-11 | 2013-09-13 |  | 0d |  | WEB Developer | 24h |
| 45 | 1.4.3 | **iOS version** |  | 28d | 2013-08-01 | 2013-09-10 | 8 | 3.5d |  |  | 224h |
| 46 | 1.4.3.1 | **Logic** |  | 9.5d | 2013-08-01 | 2013-08-14 |  | 17d | 0d |  | 76h |
| 47 | 1.4.3.1.1 | Application architecture |  | 1d | 2013-08-01 | 2013-08-02 |  | 25.5d |  | iOS developer | 8h |
| 48 | 1.4.3.1.2 | GPS manager |  | 0.5d | 2013-08-08 | 2013-08-08 |  | 21d |  | iOS developer | 4h |
| 49 | 1.4.3.1.3 | Network interactions |  | 4d | 2013-08-02 | 2013-08-08 |  | 21.5d |  | iOS developer | 32h |
| 50 | 1.4.3.1.4 | Internal data model |  | 3d | 2013-08-09 | 2013-08-13 |  | 18d |  | iOS developer | 24h |
| 51 | 1.4.3.1.5 | Push notifications |  | 1d | 2013-08-14 | 2013-08-14 |  | 17d |  | iOS developer | 8h |
| 52 | 1.4.3.2 | **UI** |  | 18.5d | 2013-08-15 | 2013-09-10 | 46 | 3.5d |  |  | 148h |
| 53 | 1.4.3.2.1 | Menu screen |  | 1d | 2013-08-15 | 2013-08-15 |  | 21d |  | iOS developer | 8h |
| 54 | 1.4.3.2.2 | Settings screen |  | 3d | 2013-08-16 | 2013-08-20 |  | 18d |  | iOS developer | 24h |
| 55 | 1.4.3.2.3 | Signature screen(with able to crope, rotate and zoom image) |  | 2d | 2013-08-21 | 2013-08-22 |  | 16d |  | iOS developer | 16h |
| 56 | 1.4.3.2.4 | Stored documents screen |  | 3d | 2013-08-23 | 2013-08-27 |  | 13d |  | iOS developer | 24h |
| 57 | 1.4.3.2.5 | Controller for dynamic checklists(FR_8 - FR_11, FR_13 - FR_17) |  | 5d | 2013-08-28 | 2013-09-03 |  | 8d |  | iOS developer | 40h |
| 58 | 1.4.3.2.6 | Daily Inspection Checklist Review screen |  | 2d | 2013-09-04 | 2013-09-05 |  | 6d |  | iOS developer | 16h |
| 59 | 1.4.3.2.7 | WebView for iPad version |  | 0.5d | 2013-09-06 | 2013-09-06 |  | 5.5d |  | iOS developer | 4h |
| 60 | 1.4.3.2.8 | Adaptation UI for iPad version |  | 2d | 2013-09-06 | 2013-09-10 |  | 3.5d |  | iOS developer | 16h |

| ID | WBS | Task | Type | Duration | Start | Finish | Predecessors | Total slack | Free slack | Resources | Work |
| --- | --- | --- | --- | --- | --- | --- | --- | --- | --- | --- | --- |
| 61 | 1.4.4 | **Android version** |  | 28.5d | 2013-08-01 | 2013-09-10 |  | 3d |  |  | 228h |
| 62 | 1.4.4.1 | **Logic** |  | 13d | 2013-08-01 | 2013-08-20 |  | 13.5d | 0d |  | 104h |
| 63 | 1.4.4.1.1 | Application architecture |  | 1.5d | 2013-08-01 | 2013-08-02 |  | 25d |  | Android developer | 12h |
| 64 | 1.4.4.1.2 | Network interaction (REST API) |  | 4d | 2013-08-05 | 2013-08-08 |  | 21d |  | Android developer | 32h |
| 65 | 1.4.4.1.3 | Geolocation |  | 1d | 2013-08-09 | 2013-08-09 |  | 20d |  | Android developer | 8h |
| 66 | 1.4.4.1.4 | Internal data model |  | 4d | 2013-08-12 | 2013-08-15 |  | 16d |  | Android developer | 32h |
| 67 | 1.4.4.1.5 | Integration Google Cloud Messaging(instant alerts) |  | 2.5d | 2013-08-16 | 2013-08-20 |  | 13.5d |  | Android developer | 20h |
| 68 | 1.4.4.2 | **Graphic and UI** |  | 15.5d | 2013-08-20 | 2013-09-10 | 62 | 3d |  |  | 124h |
| 69 | 1.4.4.2.1 | Menu screen |  | 1d | 2013-08-20 | 2013-08-21 |  | 17.5d |  | Android developer | 8h |
| 70 | 1.4.4.2.2 | Settings screen |  | 2d | 2013-08-21 | 2013-08-23 |  | 15.5d |  | Android developer | 16h |
| 71 | 1.4.4.2.3 | Signature screen(crope/rotate/zoom image) |  | 3d | 2013-08-23 | 2013-08-28 |  | 12.5d |  | Android developer | 24h |
| 72 | 1.4.4.2.4 | Stored documents screen |  | 2d | 2013-08-28 | 2013-08-30 |  | 10.5d |  | Android developer | 16h |
| 73 | 1.4.4.2.5 | Dynamically screens with checklists |  | 5d | 2013-08-30 | 2013-09-06 |  | 5.5d |  | Android developer | 40h |
| 74 | 1.4.4.2.6 | Daily Inspection Checklist Review screen |  | 2d | 2013-09-06 | 2013-09-10 |  | 3.5d |  | Android developer | 16h |
| 75 | 1.4.4.2.7 | Database viewer screen(Webview) for tablet version |  | 0.5d | 2013-09-10 | 2013-09-10 |  | 3d |  | Android developer | 4h |
| 76 | 1.5 | **Stabilization** |  | 8d | 2013-09-13 | 2013-09-25 | 15 | 0d |  |  | 128h |
| 77 | 1.5.1 | Continues Integration | milestone | 0d | 2013-09-13 | 2013-09-13 | 28 | 4.63d | 0d | PHP Developer 1; PHP Developer 2 |  |
| 78 | 1.5.2 | Test cases execution |  | 8d | 2013-09-16 | 2013-09-25 |  | 0d |  | QA Engineer | 64h |
| 79 | 1.5.3 | Defect fixing (~15% from development) |  | 3.37d | 2013-09-16 | 2013-09-19 | 77 | 4.63d |  | PHP Developer 1 [50%]; PHP Developer 2 [50%]; iOS developer; Android developer | 64h |
| 80 | 1.6 | **Deployment** |  | 1d | 2013-09-26 | 2013-09-26 | 76 | 0d |  |  | 12h |
| 81 | 1.6.1 | System assembly and deployment |  | 0.5d | 2013-09-26 | 2013-09-26 |  | 0.5d |  | PHP Developer 1; PHP Developer 2 | 8h |
| 82 | 1.6.2 | Deployment Android version |  | 1d | 2013-09-26 | 2013-09-26 |  | 0d |  | Android developer [25%] | 2h |
| 83 | 1.6.3 | Deployment iOS version |  | 1d | 2013-09-26 | 2013-09-26 |  | 0d |  | iOS developer [25%] | 2h |
| 84 | 1.7 | **Risk Management** |  | 24d | 2013-09-27 | 2013-10-30 | 80 | 0d |  |  |  |
| 85 | 1.7.1 | Sick leaves and vacations |  | 10d | 2013-09-27 | 2013-10-10 |  | 0d |  |  |  |
| 86 | 1.7.2 | Additional time for functional requirements clarification |  | 10d | 2013-10-11 | 2013-10-24 | 85 | 0d |  |  |  |
| 87 | 1.7.3 | Third-party environment and components issues |  | 4d | 2013-10-25 | 2013-10-30 | 86 | 0d |  |  |  |
