# OCSICO - Strativia Basic project WP

Schedule from MS Project, 2013-07-10 to 2013-11-08.

## Calendars

- Standard: Mon-Fri 08:00-12:00, 13:00-17:00; Sat-Sun off. Exceptions (off unless hours are given): 2013-11-07.

## Resources

| Resource |
| --- |
| Project Manager |
| Designer |
| HTML Coder |
| PHP Developer 1 |
| PHP Developer 2 |
| QA Engineer 1 |
| WEB Developer |
| iOS developer |
| Android developer |
| Customer |

## Schedule

| ID | WBS | Task | Type | Duration | Start | Finish | Predecessors | Total slack | Free slack | Resources | Work |
| --- | --- | --- | --- | --- | --- | --- | --- | --- | --- | --- | --- |
| 1 | 1 | **SafeStart App & Web-server Project** |  | 86.25d | 2013-07-10 | 2013-11-08 |  | 0d |  |  | 1196h |
| 2 | 1.1 | **Milestones** |  | 54.25d | 2013-08-22 | 2013-11-08 |  | 0d |  |  |  |
| 3 | 1.1.1 | Mobile app UI designed and approved; Accounts and Users management functionality done | milestone | 0d | 2013-08-22 | 2013-08-22 | 36 | 54.25d |  |  |  |
| 4 | 1.1.2 | Beta version release | milestone | 0d | 2013-10-03 | 2013-10-03 | 76 | 25d |  |  |  |
| 5 | 1.1.3 | Final release | milestone | 0d | 2013-11-08 | 2013-11-08 | 84 | 0d |  |  |  |
| 6 | 1.2 | **Analysis and planning** |  | 4d | 2013-07-10 | 2013-07-15 |  | 20.75d |  |  | 40h |
| 7 | 1.2.1 | Requirements analysis and discussions |  | 2d | 2013-07-10 | 2013-07-11 |  | 22.5d | 0d | Project Manager [50%] | 8h |
| 8 | 1.2.2 | Project plan and its updates | milestone | 0d | 2013-07-11 | 2013-07-11 | 7 | 20.75d | 0d | Project Manager [50%] |  |
| 9 | 1.2.3 | Test plan & cases |  | 4d | 2013-07-10 | 2013-07-15 |  | 82.25d |  | QA Engineer 1 | 32h |
| 10 | 1.3 | **Design and HTML coding** |  | 14.5d | 2013-07-12 | 2013-08-01 | 8 | 20.75d |  |  | 96h |
| 11 | 1.3.1 | Graphical design |  | 7.5d | 2013-07-12 | 2013-07-23 |  | 20.75d | 0d | Designer | 40h |
| 12 | 1.3.2 | GUI Drawing |  | 2d | 2013-07-23 | 2013-07-25 | 11 | 20.75d | 0d | Designer | 16h |
| 13 | 1.3.3 | Approval with customer | milestone | 0d | 2013-07-25 | 2013-07-25 | 12 | 20.75d | 0d | Customer; Designer |  |
| 14 | 1.3.4 | Html coding (create theme for Sencha Touch) |  | 5d | 2013-07-25 | 2013-08-01 | 13 | 20.75d | 0d | HTML Coder | 40h |
| 15 | 1.4 | **Development** |  | 36.75d | 2013-08-01 | 2013-09-23 | 14 | 0d |  |  | 920h |
| 16 | 1.4.1 | **Backend (Server REST API)** |  | 20.25d | 2013-08-01 | 2013-08-29 |  | 16.5d |  |  | 216h |
| 17 | 1.4.1.1 | Database structure |  | 1.5d | 2013-08-01 | 2013-08-02 |  | 35.25d |  | PHP Developer 2; PHP Developer 1 | 24h |
| 18 | 1.4.1.2 | System architecture (based on Zend Framework 2 module skeleton) |  | 1d | 2013-08-05 | 2013-08-05 |  | 34.25d |  | PHP Developer 1; PHP Developer 2 | 16h |
| 19 | 1.4.1.3 | ACL (based on existing module for Zend Framework 2) |  | 0.75d | 2013-08-06 | 2013-08-06 |  | 33.5d |  | PHP Developer 1; PHP Developer 2 | 12h |
| 20 | 1.4.1.4 | Auth |  | 0.5d | 2013-08-06 | 2013-08-07 |  | 33d |  | PHP Developer 1; PHP Developer 2 | 8h |
| 21 | 1.4.1.5 | API Methods (based on existing module for Zend Framework 2) |  | 1.5d | 2013-08-07 | 2013-08-08 |  | 17d | 0d | PHP Developer 1; PHP Developer 2 | 24h |
| 22 | 1.4.1.6 | PDF reports/documents generation (simple template with company logo) |  | 0.75d | 2013-08-08 | 2013-08-09 |  | 30.75d |  | PHP Developer 1; PHP Developer 2 | 12h |
| 23 | 1.4.1.7 | Push notifications Mobile devices |  | 8.75d | 2013-08-09 | 2013-08-22 |  | 22d |  | PHP Developer 1; PHP Developer 2 | 32h |
| 24 | 1.4.1.8 | Email notifications (based on existing module for Zend Framework 2) |  | 0.75d | 2013-08-22 | 2013-08-22 |  | 21.25d |  | PHP Developer 1; PHP Developer 2 | 12h |
| 25 | 1.4.1.9 | Background jobs and multiple queues (based on existing module for Zend Framework 2) |  | 1.5d | 2013-08-23 | 2013-08-26 |  | 19.75d |  | PHP Developer 1; PHP Developer 2 | 24h |
| 26 | 1.4.1.10 | Caching |  | 1.5d | 2013-08-26 | 2013-08-27 |  | 18.25d |  | PHP Developer 1; PHP Developer 2 | 24h |
| 27 | 1.4.1.11 | Cron tasks (we will create only script for call API method via console) |  | 0.25d | 2013-08-28 | 2013-08-28 |  | 18d |  | PHP Developer 1; PHP Developer 2 | 4h |
| 28 | 1.4.1.12 | Unit tests (cover only the basic functionality) |  | 1.5d | 2013-08-28 | 2013-08-29 |  | 16.5d |  | PHP Developer 1; PHP Developer 2 | 24h |

| ID | WBS | Task | Type | Duration | Start | Finish | Predecessors | Total slack | Free slack | Resources | Work |
| --- | --- | --- | --- | --- | --- | --- | --- | --- | --- | --- | --- |
| 29 | 1.4.2 | **Web Frontend** |  | 31.5d | 2013-08-08 | 2013-09-23 | 21 | 0d |  |  | 252h |
| 30 | 1.4.2.1 | Client side architecture and layout (based on Sencha Touch application) |  | 2d | 2013-08-08 | 2013-08-14 |  | 27.5d |  | WEB Developer | 16h |
| 31 | 1.4.2.2 | Sign in\Sign up page (based on Sencha Touch components) |  | 2d | 2013-08-12 | 2013-08-13 |  | 28.25d |  | WEB Developer | 16h |
| 32 | 1.4.2.3 | Panel access according to ACL |  | 1.5d | 2013-08-08 | 2013-08-15 |  | 26.25d |  | WEB Developer | 12h |
| 33 | 1.4.2.4 | System settings panel (based on Sencha Touch components) |  | 1d | 2013-08-08 | 2013-08-29 |  | 17d |  | WEB Developer | 8h |
| 34 | 1.4.2.5 | Accounts management (based on Sencha Touch components) |  | 2d | 2013-08-16 | 2013-08-20 |  | 23.25d |  | WEB Developer | 16h |
| 35 | 1.4.2.6 | Account settings |  | 1d | 2013-08-08 | 2013-08-21 |  | 22.5d |  | WEB Developer | 8h |
| 36 | 1.4.2.7 | User settings (profile) (based on Sencha Touch components) |  | 1d | 2013-08-19 | 2013-08-22 |  | 21.25d | 0d | WEB Developer | 8h |
| 37 | 1.4.2.8 | User moderation and subscription (based on Sencha Touch components) |  | 2d | 2013-08-21 | 2013-08-29 |  | 17d |  | WEB Developer | 16h |
| 38 | 1.4.2.9 | Custom field for vehicle (based on Sencha Touch components) |  | 3d | 2013-08-26 | 2013-08-28 |  | 17.25d |  | WEB Developer | 24h |
| 39 | 1.4.2.10 | Vehicles management (based on Sencha Touch components) |  | 3d | 2013-08-30 | 2013-09-04 |  | 13d |  | WEB Developer | 24h |
| 40 | 1.4.2.11 | Alerts notification |  | 2d | 2013-09-04 | 2013-09-06 |  | 11d |  | WEB Developer | 16h |
| 41 | 1.4.2.12 | Vehicle inspection checklist |  | 5d | 2013-09-06 | 2013-09-13 |  | 6d |  | WEB Developer | 40h |
| 42 | 1.4.2.13 | Vehicle report panel |  | 3d | 2013-09-13 | 2013-09-18 |  | 3d |  | WEB Developer | 24h |
| 43 | 1.4.2.14 | Backend information collection panel |  | 3d | 2013-09-18 | 2013-09-23 |  | 0d |  | WEB Developer | 24h |
| 44 | 1.4.2.15 | e-Commerce integration (simple module if needed) | milestone | 0d | 2013-08-08 | 2013-08-08 |  | 31.5d |  | WEB Developer |  |
| 45 | 1.4.3 | **iOS version** |  | 28d | 2013-08-01 | 2013-09-10 |  | 8.75d |  |  | 224h |
| 46 | 1.4.3.1 | **Logic** |  | 9.5d | 2013-08-01 | 2013-08-14 |  | 22.25d | 0d |  | 76h |
| 47 | 1.4.3.1.1 | Application architecture |  | 1d | 2013-08-01 | 2013-08-02 |  | 30.75d |  | iOS developer | 8h |
| 48 | 1.4.3.1.2 | GPS manager |  | 0.5d | 2013-08-08 | 2013-08-08 |  | 26.25d |  | iOS developer | 4h |
| 49 | 1.4.3.1.3 | Network interactions |  | 4d | 2013-08-02 | 2013-08-08 |  | 26.75d |  | iOS developer | 32h |
| 50 | 1.4.3.1.4 | Internal data model |  | 3d | 2013-08-09 | 2013-08-13 |  | 23.25d |  | iOS developer | 24h |
| 51 | 1.4.3.1.5 | Push notifications |  | 1d | 2013-08-14 | 2013-08-14 |  | 22.25d |  | iOS developer | 8h |
| 52 | 1.4.3.2 | **UI** |  | 18.5d | 2013-08-15 | 2013-09-10 | 46 | 8.75d |  |  | 148h |
| 53 | 1.4.3.2.1 | Menu screen |  | 1d | 2013-08-15 | 2013-08-15 |  | 26.25d |  | iOS developer | 8h |
| 54 | 1.4.3.2.2 | Settings screen |  | 3d | 2013-08-16 | 2013-08-20 |  | 23.25d |  | iOS developer | 24h |
| 55 | 1.4.3.2.3 | Signature screen(with able to crope, rotate and zoom image) |  | 2d | 2013-08-21 | 2013-08-22 |  | 21.25d |  | iOS developer | 16h |
| 56 | 1.4.3.2.4 | Stored documents screen |  | 3d | 2013-08-23 | 2013-08-27 |  | 18.25d |  | iOS developer | 24h |
| 57 | 1.4.3.2.5 | Controller for dynamic checklists(FR_8 - FR_11, FR_13 - FR_17) |  | 5d | 2013-08-28 | 2013-09-03 |  | 13.25d |  | iOS developer | 40h |
| 58 | 1.4.3.2.6 | Daily Inspection Checklist Review screen |  | 2d | 2013-09-04 | 2013-09-05 |  | 11.25d |  | iOS developer | 16h |
| 59 | 1.4.3.2.7 | WebView for iPad version |  | 0.5d | 2013-09-06 | 2013-09-06 |  | 10.75d |  | iOS developer | 4h |
| 60 | 1.4.3.2.8 | Adaptation UI for iPad version |  | 2d | 2013-09-06 | 2013-09-10 |  | 8.75d |  | iOS developer | 16h |

| ID | WBS | Task | Type | Duration | Start | Finish | Predecessors | Total slack | Free slack | Resources | Work |
| --- | --- | --- | --- | --- | --- | --- | --- | --- | --- | --- | --- |
| 61 | 1.4.4 | **Android version** |  | 28.5d | 2013-08-01 | 2013-09-10 |  | 8.25d |  |  | 228h |
| 62 | 1.4.4.1 | **Logic** |  | 13d | 2013-08-01 | 2013-08-20 |  | 18.75d | 0d |  | 104h |
| 63 | 1.4.4.1.1 | Application architecture |  | 1.5d | 2013-08-01 | 2013-08-02 |  | 30.25d |  | Android developer | 12h |
| 64 | 1.4.4.1.2 | Network interaction (REST API) |  | 4d | 2013-08-05 | 2013-08-08 |  | 26.25d |  | Android developer | 32h |
| 65 | 1.4.4.1.3 | Geolocation |  | 1d | 2013-08-09 | 2013-08-09 |  | 25.25d |  | Android developer | 8h |
| 66 | 1.4.4.1.4 | Internal data model |  | 4d | 2013-08-12 | 2013-08-15 |  | 21.25d |  | Android developer | 32h |
| 67 | 1.4.4.1.5 | Integration Google Cloud Messaging(instant alerts) |  | 2.5d | 2013-08-16 | 2013-08-20 |  | 18.75d |  | Android developer | 20h |
| 68 | 1.4.4.2 | **Graphic and UI** |  | 15.5d | 2013-08-20 | 2013-09-10 | 62 | 8.25d |  |  | 124h |
| 69 | 1.4.4.2.1 | Menu screen |  | 1d | 2013-08-20 | 2013-08-21 |  | 22.75d |  | Android developer | 8h |
| 70 | 1.4.4.2.2 | Settings screen |  | 2d | 2013-08-21 | 2013-08-23 |  | 20.75d |  | Android developer | 16h |
| 71 | 1.4.4.2.3 | Signature screen(crope/rotate/zoom image) |  | 3d | 2013-08-23 | 2013-08-28 |  | 17.75d |  | Android developer | 24h |
| 72 | 1.4.4.2.4 | Stored documents screen |  | 2d | 2013-08-28 | 2013-08-30 |  | 15.75d |  | Android developer | 16h |
| 73 | 1.4.4.2.5 | Dynamically screens with checklists |  | 5d | 2013-08-30 | 2013-09-06 |  | 10.75d |  | Android developer | 40h |
| 74 | 1.4.4.2.6 | Daily Inspection Checklist Review screen |  | 2d | 2013-09-06 | 2013-09-10 |  | 8.75d |  | Android developer | 16h |
| 75 | 1.4.4.2.7 | Database viewer screen(Webview) for tablet version |  | 0.5d | 2013-09-10 | 2013-09-10 |  | 8.25d |  | Android developer | 4h |
| 76 | 1.5 | **Stabilization** |  | 8d | 2013-09-23 | 2013-10-03 | 15 | 0d |  |  | 128h |
| 77 | 1.5.1 | Continues Integration | milestone | 0d | 2013-09-23 | 2013-09-23 | 28 | 4.63d | 0d | PHP Developer 1; PHP Developer 2 |  |
| 78 | 1.5.2 | Test cases execution |  | 8d | 2013-09-23 | 2013-10-03 |  | 0d |  | QA Engineer 1 | 64h |
| 79 | 1.5.3 | Defect fixing (~15% from development) |  | 3.37d | 2013-09-23 | 2013-09-26 | 77 | 4.63d |  | PHP Developer 1 [50%]; PHP Developer 2 [50%]; iOS developer; Android developer | 64h |
| 80 | 1.6 | **Deployment** |  | 1d | 2013-10-03 | 2013-10-04 | 76 | 0d |  |  | 12h |
| 81 | 1.6.1 | System assembly and deployment |  | 0.5d | 2013-10-03 | 2013-10-03 |  | 0.5d |  | PHP Developer 1; PHP Developer 2 | 8h |
| 82 | 1.6.2 | Deployment Android version |  | 1d | 2013-10-03 | 2013-10-04 |  | 0d |  | Android developer [25%] | 2h |
| 83 | 1.6.3 | Deployment iOS version |  | 1d | 2013-10-03 | 2013-10-04 |  | 0d |  | iOS developer [25%] | 2h |
| 84 | 1.7 | **Risk Management** |  | 24d | 2013-10-04 | 2013-11-08 | 80 | 0d |  |  |  |
| 85 | 1.7.1 | Sick leaves and vacations |  | 10d | 2013-10-04 | 2013-10-18 |  | 0d |  |  |  |
| 86 | 1.7.2 | Additional time for functional requirements clarification |  | 10d | 2013-10-18 | 2013-11-01 | 85 | 0d |  |  |  |
| 87 | 1.7.3 | Third-party environment and components issues |  | 4d | 2013-11-01 | 2013-11-08 | 86 | 0d |  |  |  |
